# Plan General MT101 - Bancomer vr 1.1

Schedule from MS Project, 2012-12-03 to 2013-05-23.

## Calendars

- Estándar: Mon-Fri 09:00-13:00, 15:00-19:00; Sat-Sun off. Exceptions (off unless hours are given): 2012-12-25 (Navidad), 2013-01-01 (Año Nuevo), 2013-02-04 (Puente Febrero), 2013-03-18 (Puente Marzo), 2013-04-04 to 2013-04-05 (Semana Santa 2013), 2013-05-01 (Puente Mayo).

## Resources

| Resource |
| --- |
| Bancomer |
| Enlace |

## Schedule

| ID | WBS | Task | Type | Duration | Start | Finish | Predecessors | Total slack | Free slack | Resources | Work | Text2 | Text1 |
| --- | --- | --- | --- | --- | --- | --- | --- | --- | --- | --- | --- | --- | --- |
| 1 | 1 | **Inicio** |  | 6d? | 2012-12-03 | 2012-12-10 |  | 111d |  |  |  |  |  |
| 2 | 1.1 | Kick off del Proyecto |  | 1d? | 2012-12-03 | 2012-12-03 |  | 111d | 0d |  |  | Enlace |  |
| 3 | 1.2 | Elaborar Plan de trabajo |  | 3d | 2012-12-04 | 2012-12-06 | 2 | 111d | 0d |  |  | Enlace | Plan |
| 4 | 1.3 | Inducción al equipo de trabajo |  | 2d | 2012-12-07 | 2012-12-10 | 3 | 111d |  |  |  | Enlace |  |
| 5 | 1.4 | Preparar ambiente de Trabajo |  | 6d | 2012-12-03 | 2012-12-10 |  | 111d |  |  |  | Enlace |  |
| 6 | 2 | **Análisis** |  | 43d | 2012-12-03 | 2013-02-01 |  | 2.25d |  |  | 332.8h |  |  |
| 7 | 2.1 | Especifiación Requisitos |  | 21d | 2012-12-03 | 2013-01-02 |  | 45.62d | 0d |  |  | Bancomer | P102. Catálogo de Requisitos |
| 8 | 2.2 | Alcance Cerrado | milestone | 0d | 2013-01-02 | 2013-01-02 | 7 | 45.62d | 0d |  |  |  |  |
| 9 | 2.3 | Definición de Procesos | milestone | 0d | 2012-12-03 | 2012-12-03 |  | 117d |  |  |  | Bancomer | P036. Definición de procesos |
| 10 | 2.4 | Definición de casos de uso | milestone | 0d | 2012-12-03 | 2012-12-03 |  | 117d |  |  |  | Bancomer | P026. Definición de casos de uso |
| 11 | 2.5 | Interfaz Usuario |  | 11d | 2012-12-03 | 2012-12-17 |  | 2.25d | 0d |  |  | Bancomer | P099. Prototipo |
| 12 | 2.6 | Modelo de Datos |  | 5d | 2012-12-18 | 2012-12-24 | 11 | 2.25d | 0d |  |  | Bancomer | P087. Modelo Datos |
| 13 | 2.7 | Modelo de Procesos |  | 6d | 2012-12-26 | 2013-01-03 | 12 | 2.25d | 0d |  |  | Bancomer | C105. Modelo de procesos |
| 14 | 2.8 | Modelo Casos de Uso |  | 5d | 2013-01-04 | 2013-01-10 | 13 | 2.25d | 0d |  |  | Bancomer | P085. Modelo Casos de Uso |
| 15 | 2.9 | Estrategia y Plan de pruebas |  | 20d | 2013-01-03 | 2013-01-30 | 7 | 76d |  |  |  | Bancomer | C109. Estrategia de prueba |
| 16 | 2.10 | Casos de Prueba |  | 10d | 2013-01-11 | 2013-01-24 | 14 | 52d | 0d |  |  | Bancomer | C204. Casos de prueba |
| 17 | 2.11 | **Revisión de Requisitos** |  | 32d | 2012-12-18 | 2013-02-01 |  | 18.25d |  | Enlace [130%] | 332.8h | Enlace |  |
| 18 | 2.11.1 | Revisión de Interfaz de usuario |  | 5d | 2012-12-18 | 2012-12-24 | 11 | 101d |  |  |  | Enlace |  |
| 19 | 2.11.2 | Revisión modelo de datos |  | 6d | 2012-12-26 | 2013-01-03 | 12 | 95d |  |  |  | Enlace |  |
| 20 | 2.11.3 | Revision Modelo de procesos |  | 5d | 2013-01-04 | 2013-01-10 | 13 | 90d |  |  |  | Enlace |  |
| 21 | 2.11.4 | Revisión Modelo de Casos de Uso |  | 3d | 2013-01-11 | 2013-01-15 | 14 | 2.25d | 0d |  |  | Enlace |  |
| 22 | 2.11.5 | Revisión Final de Requisitos |  | 13d | 2013-01-16 | 2013-02-01 | 21 | 2.25d | 0d |  |  | Enlace |  |
| 23 | 3 | **Diseño** |  | 44d | 2013-01-03 | 2013-03-06 |  | 24.25d |  |  | 562h |  |  |
| 24 | 3.1 | Diseño de Pruebas |  | 8d | 2013-01-25 | 2013-02-06 | 16 | 52d | 0d |  |  | Bancomer |  |
| 25 | 3.2 | Diseño Físico del modelo de datos |  | 6d | 2013-02-07 | 2013-02-14 | 24 | 52d | 0d |  |  | Bancomer | C310. Modelo Datos Físico |

Notes:
- 5: Definir compartido de documentos
- 7: Entregables: / ·c-102 Catálogo de requisitos / ·P099. Prototipo / ·P087. Modelo de datos / ·C105. Modelo de procesos / ·P085 Modelo de Casos de Uso / ·P036.Definición de Proceso / ·P026.Definición de Caso de Uso

| ID | WBS | Task | Duration | Start | Finish | Predecessors | Total slack | Free slack | Resources | Work | Text2 |
| --- | --- | --- | --- | --- | --- | --- | --- | --- | --- | --- | --- |
| 26 | 3.3 | **Diseño detallado de programas y Componentes** | 44d | 2013-01-03 | 2013-03-06 |  | 24.25d |  |  | 562h |  |
| 27 | 3.3.1 | **WEB Swift** | 22d | 2013-02-05 | 2013-03-06 | 22 | 2.25d | 0d | Enlace | 176h | Enlace |
| 28 | 3.3.1.1 | Pantalla Clientes AAA | 2d | 2013-02-05 | 2013-02-06 |  | 2.25d | 0d |  |  |  |
| 29 | 3.3.1.2 | Pantalla de Monitor Cash | 2d | 2013-02-07 | 2013-02-08 | 28 | 2.25d | 0d |  |  |  |
| 30 | 3.3.1.3 | Pantalla de operaciones Dudosas | 2d | 2013-02-11 | 2013-02-12 | 29 | 2.25d | 0d |  |  |  |
| 31 | 3.3.1.4 | Pantalla Reporte Gestión | 2d | 2013-02-13 | 2013-02-14 | 30 | 2.25d | 0d |  |  |  |
| 32 | 3.3.1.5 | Pantalla monitor Cash Reset | 2d | 2013-02-15 | 2013-02-18 | 31 | 2.25d | 0d |  |  |  |
| 33 | 3.3.1.6 | Pantalla de Modificación de Intervalos | 2d | 2013-02-19 | 2013-02-20 | 32 | 2.25d | 0d |  |  |  |
| 34 | 3.3.1.7 | Pantalla de PDM-PDE | 2d | 2013-02-21 | 2013-02-22 | 33 | 2.25d | 0d |  |  |  |
| 35 | 3.3.1.8 | Pantala e Sicocos | 2d | 2013-02-25 | 2013-02-26 | 34 | 2.25d | 0d |  |  |  |
| 36 | 3.3.1.9 | Pantalla de Comisiones | 2d | 2013-02-27 | 2013-02-28 | 35 | 2.25d | 0d |  |  |  |
| 37 | 3.3.1.10 | Revisión de Diseño de WebSwift | 4d | 2013-03-01 | 2013-03-06 | 36 | 2.25d |  |  |  |  |
| 38 | 3.3.2 | **Migración de Base de Datos** | 14d | 2013-02-15 | 2013-03-06 | 25 | 52d |  | Enlace | 112h | Enlace |
| 39 | 3.3.2.1 | Diseño de Scripts de migración | 2d | 2013-02-15 | 2013-02-18 |  | 52d | 0d |  |  |  |
| 40 | 3.3.2.2 | Construcción de scripts de migración | 5d | 2013-02-19 | 2013-02-25 | 39 | 52d | 0d |  |  |  |
| 41 | 3.3.2.3 | Análisis de impacto Base de Datos en Store Procedures y Triggers | 5d | 2013-02-26 | 2013-03-04 | 40 | 52d | 0d |  |  |  |
| 42 | 3.3.2.4 | Revisión Modelo de Migración | 2d | 2013-03-05 | 2013-03-06 | 41 | 52d |  |  |  |  |
| 43 | 3.3.3 | **Sterling Commerce Integrator (Conversión)** | 44d | 2013-01-03 | 2013-03-06 |  | 45.62d |  |  | 274h |  |
| 44 | 3.3.3.1 | **POC WebSwift / SC Integrator** | 40d | 2013-01-03 | 2013-02-28 |  | 45.62d | 0d | Enlace [50%] | 160h | Enlace |
| 45 | 3.3.3.1.1 | Definir prueba de concepto WebSwift / SC Integrator | 5d | 2013-01-03 | 2013-01-09 | 8 | 45.62d | 0d |  |  |  |
| 46 | 3.3.3.1.2 | Preparar ambiente para POC | 5d | 2013-01-10 | 2013-01-16 | 45 | 45.62d | 0d |  |  |  |
| 47 | 3.3.3.1.3 | Desarrollar prueba de concepto WebSwift / SC Integrator | 20d | 2013-01-17 | 2013-02-14 | 46 | 45.62d | 0d |  |  |  |
| 48 | 3.3.3.1.4 | Diseño de componente para ejecutar BP | 5d | 2013-02-15 | 2013-02-21 | 47 | 45.62d | 0d |  |  |  |
| 49 | 3.3.3.1.5 | Diseño de componente para actualización de Calendarios | 5d | 2013-02-22 | 2013-02-28 | 48 | 45.62d |  |  |  |  |

Notes:
- 26: Text1: P037. Definición de Programa / C118. Modelo SODA / P987. Definición de Clases de Diseño

| ID | WBS | Task | Type | Duration | Start | Finish | Predecessors | Total slack | Free slack | Constraint | Resources | Work | Text2 | Text1 |
| --- | --- | --- | --- | --- | --- | --- | --- | --- | --- | --- | --- | --- | --- | --- |
| 50 | 3.3.3.2 | **SC Intgrator Procesos y mapas** |  | 22d | 2013-02-05 | 2013-03-06 | 22 | 33d | 0d |  | Enlace [50%] | 88h | Enlace |  |
| 51 | 3.3.3.2.1 | Diseño de Business Processes |  | 10d | 2013-02-05 | 2013-02-18 |  | 33d | 0d |  |  |  |  |  |
| 52 | 3.3.3.2.2 | Diseño de Mapas de Conversión |  | 8d | 2013-02-19 | 2013-02-28 | 51 | 33d | 0d |  |  |  |  |  |
| 53 | 3.3.3.2.3 | Diseño Esquemas de notificacion y configuración general |  | 4d | 2013-03-01 | 2013-03-06 | 52 | 33d |  |  |  |  |  |  |
| 54 | 3.3.3.3 | Revision Diseño SC |  | 15d | 2013-02-14 | 2013-03-06 | 50FF | 52d |  |  | Enlace [21.7%] | 26h | Enlace |  |
| 55 | 3.4 | Entorno de Desarrollo Disponible | milestone | 0d | 2013-02-22 | 2013-02-22 |  | 61d |  | start no earlier than 2013-02-22 |  |  | Bancomer |  |
| 56 | 4 | **Construcción** |  | 25d | 2013-02-27 | 2013-04-03 |  | 2.25d |  |  |  | 899.04h |  | P014. Código de componentes |
| 57 | 4.1 | **WEB Swift** |  | 25d | 2013-02-27 | 2013-04-03 | 27FS-6d | 2.25d | 0d |  |  | 368h | Enlace |  |
| 58 | 4.1.1 | Gestión de Alertas |  | 4d | 2013-02-27 | 2013-03-04 |  | 2.25d | 0d |  | Enlace | 32h |  |  |
| 59 | 4.1.2 | Pantalla Clientes AAA |  | 6d | 2013-03-05 | 2013-03-12 | 58 | 2.25d | 0d |  | Enlace | 48h |  |  |
| 60 | 4.1.3 | Pantalla de Monitor Cash |  | 6d | 2013-03-13 | 2013-03-21 | 59 | 2.25d | 0d |  | Enlace | 48h |  |  |
| 61 | 4.1.4 | Pantalla de operaciones Dudosas |  | 6d | 2013-03-22 | 2013-03-29 | 60 | 2.25d | 0d |  | Enlace | 48h |  |  |
| 62 | 4.1.5 | Pantalla monitor Cash Reset |  | 3d | 2013-04-01 | 2013-04-03 | 61 | 2.25d |  |  | Enlace | 24h |  |  |
| 63 | 4.1.6 | Componentes de encripción |  | 4d | 2013-02-27 | 2013-03-04 |  | 6.25d | 0d |  | Enlace | 32h |  |  |
| 64 | 4.1.7 | Pantalla Reporte Gestión |  | 2d | 2013-03-05 | 2013-03-06 | 63 | 6.25d | 0d |  | Enlace | 16h |  |  |
| 65 | 4.1.8 | Pantalla de Modificación de Intervalos |  | 4d | 2013-03-07 | 2013-03-12 | 64 | 6.25d | 0d |  | Enlace | 32h |  |  |
| 66 | 4.1.9 | Pantalla de PDM-PDE |  | 5d | 2013-03-13 | 2013-03-20 | 65 | 6.25d | 0d |  | Enlace | 40h |  |  |
| 67 | 4.1.10 | Pantala e Sicocos |  | 3d | 2013-03-21 | 2013-03-25 | 66 | 6.25d | 0d |  | Enlace | 24h |  |  |
| 68 | 4.1.11 | Pantalla de Comisiones |  | 3d | 2013-03-26 | 2013-03-28 | 67 | 6.25d |  |  | Enlace | 24h |  |  |
| 69 | 4.2 | **Servicios Sincronización Sterling Commerce** |  | 10.38d | 2013-03-01 | 2013-03-15 | 44 | 45.62d |  |  |  | 83.04h | Enlace |  |
| 70 | 4.2.1 | Completar interacción BP |  | 5d | 2013-03-01 | 2013-03-07 |  | 45.62d | 0d |  | Enlace | 40h |  |  |
| 71 | 4.2.2 | Completar interación Scheduler y parámetros |  | 5.38d | 2013-03-08 | 2013-03-15 | 70 | 45.62d |  |  | Enlace | 43.04h |  |  |
| 72 | 4.3 | **SC Procesos y Mapas** |  | 19d | 2013-03-07 | 2013-04-03 | 50 | 33d |  |  | Enlace | 448h |  |  |
| 73 | 4.3.1 | BP 1 |  | 3d | 2013-03-07 | 2013-03-11 |  | 34d | 0d |  | Enlace | 24h |  |  |
| 74 | 4.3.2 | BP 2 |  | 3d | 2013-03-12 | 2013-03-14 | 73 | 34d | 0d |  | Enlace | 24h |  |  |
| 75 | 4.3.3 | BP 3 |  | 2d | 2013-03-15 | 2013-03-19 | 74 | 34d | 0d |  | Enlace | 16h |  |  |
| 76 | 4.3.4 | BP 4 |  | 2d | 2013-03-20 | 2013-03-21 | 75 | 34d | 0d |  | Enlace | 16h |  |  |
| 77 | 4.3.5 | BP 5 |  | 2d | 2013-03-22 | 2013-03-25 | 76 | 34d | 0d |  | Enlace | 16h |  |  |
| 78 | 4.3.6 | BP 6 |  | 2d | 2013-03-26 | 2013-03-27 | 77 | 34d | 0d |  | Enlace | 16h |  |  |
| 79 | 4.3.7 | BP 7 |  | 2d | 2013-03-28 | 2013-03-29 | 78 | 34d | 0d |  | Enlace | 16h |  |  |
| 80 | 4.3.8 | BP 8 |  | 2d | 2013-04-01 | 2013-04-02 | 79 | 34d |  |  | Enlace | 16h |  |  |
| 81 | 4.3.9 | Mapa 1 |  | 3d | 2013-03-07 | 2013-03-11 |  | 33d | 0d |  | Enlace | 24h |  |  |
| 82 | 4.3.10 | Mapa 2 |  | 2d | 2013-03-12 | 2013-03-13 | 81 | 33d | 0d |  | Enlace | 16h |  |  |
| 83 | 4.3.11 | Mapa 3 |  | 2d | 2013-03-14 | 2013-03-15 | 82 | 33d | 0d |  | Enlace | 16h |  |  |
| 84 | 4.3.12 | Mapa 4 |  | 2d | 2013-03-19 | 2013-03-20 | 83 | 33d | 0d |  | Enlace | 16h |  |  |
| 85 | 4.3.13 | Mapa 5 |  | 2d | 2013-03-21 | 2013-03-22 | 84 | 33d | 0d |  | Enlace | 16h |  |  |
| 86 | 4.3.14 | Mapa 6 |  | 2d | 2013-03-25 | 2013-03-26 | 85 | 33d | 0d |  | Enlace | 16h |  |  |
| 87 | 4.3.15 | Mapa 7 |  | 2d | 2013-03-27 | 2013-03-28 | 86 | 33d | 0d |  | Enlace | 16h |  |  |
| 88 | 4.3.16 | Mapa 8 |  | 2d | 2013-03-29 | 2013-04-01 | 87 | 33d | 0d |  | Enlace | 16h |  |  |
| 89 | 4.3.17 | Mapa 9 |  | 1d | 2013-04-02 | 2013-04-02 | 88 | 33d | 0d |  | Enlace | 8h |  |  |
| 90 | 4.3.18 | Mapa 10 |  | 1d | 2013-04-03 | 2013-04-03 | 89 | 33d |  |  | Enlace | 8h |  |  |

| ID | WBS | Task | Type | Duration | Start | Finish | Predecessors | Total slack | Free slack | Constraint | Resources | Work | Text2 | Text1 |
| --- | --- | --- | --- | --- | --- | --- | --- | --- | --- | --- | --- | --- | --- | --- |
| 91 | 5 | **Pruebas Funcionales** |  | 117d | 2012-12-03 | 2013-05-23 |  | 0d |  |  |  | 449h |  |  |
| 92 | 5.1 | Entorno de Pruebas disponible | milestone | 0d | 2013-05-21 | 2013-05-21 |  | 3d |  | start no earlier than 2013-05-21 |  |  | Bancomer |  |
| 93 | 5.2 | Pruebas Técnicas |  | 20d | 2013-04-08 | 2013-05-06 | 57 | 2.25d | 0d |  | Enlace [200%] | 320h | Enlace |  |
| 94 | 5.3 | Soporte Pruebas Funcionales |  | 10.75d | 2013-05-07 | 2013-05-21 | 93 | 2.25d |  |  | Enlace [150%] | 129h | Enlace |  |
| 95 | 5.4 | Ejectuar Pruebas Funcionales | manual | 10d | 2013-05-10 | 2013-05-23 |  |  |  |  |  |  | Bancomer |  |
| 96 | 5.5 | Validar y aprobar pruebas funcionales |  | 6d | 2012-12-03 | 2012-12-10 |  | 111d |  |  |  |  | Bancomer | A990. Aprobación de pruebas funcionales |
