# Plan General Mapeador - Bancomer vr 1.1

Schedule from MS Project, 2012-12-27 to 2013-06-12.

## Calendars

- Estándar: Mon-Fri 09:00-13:00, 15:00-19:00; Sat-Sun off. Exceptions (off unless hours are given): 2013-01-01 (Año Nuevo), 2013-02-04 (Puente Febrero), 2013-03-18 (Puente Marzo), 2013-04-04 to 2013-04-05 (Semana Santa 2013), 2013-05-01 (Puente Mayo).

## Resources

| Resource |
| --- |
| Bancomer |
| Enlace |

## Schedule

| ID | WBS | Task | Type | Duration | Start | Finish | Predecessors | Total slack | Free slack | Resources | Work | Text2 | Text1 |
| --- | --- | --- | --- | --- | --- | --- | --- | --- | --- | --- | --- | --- | --- |
| 1 | 1 | **Inicio** |  | 6d? | 2012-12-27 | 2013-01-04 |  |  |  |  |  |  |  |
| 2 | 1.1 | Kick off del Proyecto |  | 1d? | 2012-12-27 | 2012-12-27 |  | 0d |  |  |  | Enlace |  |
| 3 | 1.2 | Elaborar Plan de trabajo |  | 3d | 2012-12-28 | 2013-01-02 | 2 | 0d |  |  |  | Enlace | Plan |
| 4 | 1.3 | Inducción al equipo de trabajo |  | 2d | 2013-01-03 | 2013-01-04 | 3 | 0d |  |  |  | Enlace |  |
| 5 | 1.4 | Preparar ambiente de Trabajo |  | 6d | 2012-12-27 | 2013-01-04 |  | 0d |  |  |  | Enlace |  |
| 6 | 2 | **Análisis** |  | 41d | 2012-12-27 | 2013-02-25 |  | 5.25d |  |  | 301.6h |  |  |
| 7 | 2.1 | Especifiación Requisitos |  | 21d | 2012-12-27 | 2013-01-25 |  | 42.62d | 0d |  |  | Bancomer | P102. Catálogo de Requisitos |
| 8 | 2.2 | Alcance Cerrado | milestone | 0d | 2013-01-25 | 2013-01-25 | 7 | 42.62d | 0d |  |  |  |  |
| 9 | 2.3 | Definición de Procesos | milestone | 0d | 2012-12-27 | 2012-12-27 |  | 114d |  |  |  | Bancomer | P036. Definición de procesos |
| 10 | 2.4 | Definición de casos de uso | milestone | 0d | 2012-12-27 | 2012-12-27 |  | 114d |  |  |  | Bancomer | P026. Definición de casos de uso |
| 11 | 2.5 | Interfaz Usuario |  | 11d | 2012-12-27 | 2013-01-11 |  | 5.25d | 0d |  |  | Bancomer | P099. Prototipo |
| 12 | 2.6 | Modelo de Datos |  | 5d | 2013-01-14 | 2013-01-18 | 11 | 5.25d | 0d |  |  | Bancomer | P087. Modelo Datos |
| 13 | 2.7 | Modelo de Procesos |  | 6d | 2013-01-21 | 2013-01-28 | 12 | 5.25d | 0d |  |  | Bancomer | C105. Modelo de procesos |
| 14 | 2.8 | Modelo Casos de Uso |  | 5d | 2013-01-29 | 2013-02-05 | 13 | 5.25d | 0d |  |  | Bancomer | P085. Modelo Casos de Uso |
| 15 | 2.9 | Estrategia y Plan de pruebas |  | 20d | 2013-01-28 | 2013-02-25 | 7 | 73d |  |  |  | Bancomer | C109. Estrategia de prueba |
| 16 | 2.10 | Casos de Prueba |  | 10d | 2013-02-06 | 2013-02-19 | 14 | 63d | 0d |  |  | Bancomer | C204. Casos de prueba |
| 17 | 2.11 | **Revisión de Requisitos** |  | 29d | 2013-01-14 | 2013-02-22 |  | 21.25d |  | Enlace [130%] | 301.6h | Enlace |  |
| 18 | 2.11.1 | Revisión de Interfaz de usuario |  | 5d | 2013-01-14 | 2013-01-18 | 11 | 98d |  |  |  | Enlace |  |
| 19 | 2.11.2 | Revisión modelo de datos |  | 6d | 2013-01-21 | 2013-01-28 | 12 | 92d |  |  |  | Enlace |  |
| 20 | 2.11.3 | Revision Modelo de procesos |  | 5d | 2013-01-29 | 2013-02-05 | 13 | 87d |  |  |  | Enlace |  |
| 21 | 2.11.4 | Revisión Modelo de Casos de Uso |  | 3d | 2013-02-06 | 2013-02-08 | 14 | 5.25d | 0d |  |  | Enlace |  |
| 22 | 2.11.5 | Revisión Final de Requisitos |  | 10d | 2013-02-11 | 2013-02-22 | 21 | 5.25d | 0d |  |  | Enlace |  |
| 23 | 3 | **Diseño** |  | 41d | 2013-01-28 | 2013-03-27 |  | 24.25d |  |  | 426h |  |  |
| 24 | 3.1 | Diseño de Pruebas |  | 8d | 2013-02-20 | 2013-03-01 | 16 | 63d | 0d |  |  | Bancomer |  |
| 25 | 3.2 | Diseño Físico del modelo de datos |  | 6d | 2013-03-04 | 2013-03-11 | 24 | 63d |  |  |  | Bancomer | C310. Modelo Datos Físico |

Notes:
- 5: Definir compartido de documentos
- 7: Entregables: / ·c-102 Catálogo de requisitos / ·P099. Prototipo / ·P087. Modelo de datos / ·C105. Modelo de procesos / ·P085 Modelo de Casos de Uso / ·P036.Definición de Proceso / ·P026.Definición de Caso de Uso

| ID | WBS | Task | Duration | Start | Finish | Predecessors | Total slack | Free slack | Resources | Work | Text2 |
| --- | --- | --- | --- | --- | --- | --- | --- | --- | --- | --- | --- |
| 26 | 3.3 | **Diseño detallado de programas y Componentes** | 41d | 2013-01-28 | 2013-03-27 |  | 24.25d |  |  | 426h |  |
| 27 | 3.3.1 | **WEB Mapeador** | 19d | 2013-02-25 | 2013-03-22 | 22 | 5.25d | 0d | Enlace | 152h | Enlace |
| 28 | 3.3.1.1 | Gestión de Mapas | 2d | 2013-02-25 | 2013-02-26 |  | 5.25d | 0d |  |  |  |
| 29 | 3.3.1.2 | Administración Notificaciones y alertas | 3d | 2013-02-27 | 2013-03-01 | 28 | 5.25d | 0d |  |  |  |
| 30 | 3.3.1.3 | Administración de puntos de acceso. | 2d | 2013-03-04 | 2013-03-05 | 29 | 5.25d | 0d |  |  |  |
| 31 | 3.3.1.4 | Administración de clientes | 3d | 2013-03-06 | 2013-03-08 | 30 | 5.25d | 0d |  |  |  |
| 32 | 3.3.1.5 | Administración de productos. | 3d | 2013-03-11 | 2013-03-13 | 31 | 5.25d | 0d |  |  |  |
| 33 | 3.3.1.6 | Administración de Flujos | 3d | 2013-03-14 | 2013-03-19 | 32 | 5.25d | 0d |  |  |  |
| 34 | 3.3.1.7 | Parametrización del Proceso de Mapas | 3d | 2013-03-20 | 2013-03-22 | 33 | 5.25d |  |  |  |  |
| 35 | 3.3.1.8 | Parametrización del Proceso de Persistencia de Archivos | 3d | 2013-02-25 | 2013-02-27 |  | 5.25d | 0d |  |  |  |
| 36 | 3.3.1.9 | Parametrización del Registro de datos de Archivos | 2d | 2013-02-28 | 2013-03-01 | 35 | 5.25d | 0d |  |  |  |
| 37 | 3.3.1.10 | Paremetrización del Proceso de Notificaciones y/o SMS | 2d | 2013-03-04 | 2013-03-05 | 36 | 5.25d | 0d |  |  |  |
| 38 | 3.3.1.11 | Parametrización de Proceso de Tracking Global | 3d | 2013-03-06 | 2013-03-08 | 37 | 5.25d | 0d |  |  |  |
| 39 | 3.3.1.12 | Consulta Servicios | 3d | 2013-03-11 | 2013-03-13 | 38 | 5.25d | 0d |  |  |  |
| 40 | 3.3.1.13 | Configuración | 2d | 2013-03-14 | 2013-03-15 | 39 | 5.25d | 0d |  |  |  |
| 41 | 3.3.1.14 | Monitoreo | 2d | 2013-03-19 | 2013-03-20 | 40 | 5.25d | 0d |  |  |  |
| 42 | 3.3.1.15 | Gestor de Catálogos | 2d | 2013-03-21 | 2013-03-22 | 41 | 5.25d |  |  |  |  |
| 43 | 3.3.1.16 | Usuarios y seguridad | 5d | 2013-02-25 | 2013-03-01 |  | 17.25d | 0d |  |  |  |
| 44 | 3.3.1.17 | Log Transacciones | 2d | 2013-03-04 | 2013-03-05 | 43 | 17.25d |  |  |  |  |
| 45 | 3.3.2 | **Sterling Commerce Integrator (Conversión)** | 41d | 2013-01-28 | 2013-03-27 |  | 42.62d |  |  | 274h |  |
| 46 | 3.3.2.1 | **POC Mapeador/ SC Integrator** | 40d | 2013-01-28 | 2013-03-26 |  | 42.62d | 0d | Enlace [50%] | 160h | Enlace |
| 47 | 3.3.2.1.1 | Definir prueba de concepto WebMapeador / SC Integrator | 5d | 2013-01-28 | 2013-02-01 | 8 | 42.62d | 0d |  |  |  |
| 48 | 3.3.2.1.2 | Preparar ambiente para POC | 5d | 2013-02-05 | 2013-02-11 | 47 | 42.62d | 0d |  |  |  |
| 49 | 3.3.2.1.3 | Desarrollar prueba de concepto WebMapeador / SC Integrator | 20d | 2013-02-12 | 2013-03-11 | 48 | 42.62d | 0d |  |  |  |
| 50 | 3.3.2.1.4 | Diseño de componente para ejecutar BP | 5d | 2013-03-12 | 2013-03-19 | 49 | 42.62d | 0d |  |  |  |
| 51 | 3.3.2.1.5 | Diseño de componente para actualización de Calendarios | 5d | 2013-03-20 | 2013-03-26 | 50 | 42.62d |  |  |  |  |

Notes:
- 26: Text1: P037. Definición de Programa / C118. Modelo SODA / P987. Definición de Clases de Diseño

| ID | WBS | Task | Type | Duration | Start | Finish | Predecessors | Total slack | Free slack | Constraint | Resources | Work | Text2 | Text1 |
| --- | --- | --- | --- | --- | --- | --- | --- | --- | --- | --- | --- | --- | --- | --- |
| 52 | 3.3.2.2 | **SC Intgrator Procesos y mapas** |  | 22d | 2013-02-25 | 2013-03-27 | 22 | 33d | 0d |  | Enlace [50%] | 88h | Enlace |  |
| 53 | 3.3.2.2.1 | Diseño de Business Processes |  | 10d | 2013-02-25 | 2013-03-08 |  | 33d | 0d |  |  |  |  |  |
| 54 | 3.3.2.2.2 | Diseño de Mapas de Conversión |  | 8d | 2013-03-11 | 2013-03-21 | 53 | 33d | 0d |  |  |  |  |  |
| 55 | 3.3.2.2.3 | Diseño Esquemas de notificacion y configuración general |  | 4d | 2013-03-22 | 2013-03-27 | 54 | 33d |  |  |  |  |  |  |
| 56 | 3.3.2.3 | Revision Diseño SC |  | 15d | 2013-03-06 | 2013-03-27 | 52FF | 52d |  |  | Enlace [21.7%] | 26h | Enlace |  |
| 57 | 3.4 | Entorno de Desarrollo Disponible | milestone | 0d | 2013-02-22 | 2013-02-22 |  | 75d |  | start no earlier than 2013-02-22 |  |  | Bancomer |  |
| 58 | 4 | **Construcción** |  | 28d | 2013-03-14 | 2013-04-25 |  | 5.25d |  |  |  | 859.04h |  | P014. Código de componentes |
| 59 | 4.1 | **WEB Mapeador** |  | 25d | 2013-03-14 | 2013-04-22 | 27FS-6d | 5.25d | 0d |  |  | 328h | Enlace |  |
| 60 | 4.1.1 | Gestión de Mapas |  | 4d | 2013-03-14 | 2013-03-20 |  | 5.25d | 0d |  | Enlace | 32h |  |  |
| 61 | 4.1.2 | Administración Notificaciones y alertas |  | 5d | 2013-03-21 | 2013-03-27 | 60 | 5.25d | 0d |  | Enlace | 40h |  |  |
| 62 | 4.1.3 | Administración de puntos de acceso. |  | 5d | 2013-03-28 | 2013-04-03 | 61 | 5.25d | 0d |  | Enlace | 40h |  |  |
| 63 | 4.1.4 | Administración de clientes |  | 5d | 2013-04-08 | 2013-04-12 | 62 | 5.25d | 0d |  | Enlace | 40h |  |  |
| 64 | 4.1.5 | Administración de productos. |  | 3d | 2013-04-15 | 2013-04-17 | 63 | 5.25d | 0d |  | Enlace | 24h |  |  |
| 65 | 4.1.6 | Administración de Flujos |  | 3d | 2013-04-18 | 2013-04-22 | 64 | 5.25d |  |  | Enlace | 24h |  |  |
| 66 | 4.1.7 | Parametrización del Proceso de Mapas |  | 3d | 2013-03-14 | 2013-03-19 |  | 6.25d | 0d |  | Enlace | 24h |  |  |
| 67 | 4.1.8 | Parametrización del Proceso de Persistencia de Archivos |  | 3d | 2013-03-20 | 2013-03-22 | 66 | 6.25d | 0d |  | Enlace | 24h |  |  |
| 68 | 4.1.9 | Parametrización del Registro de datos de Archivos |  | 4d | 2013-03-25 | 2013-03-28 | 67 | 6.25d | 0d |  | Enlace | 32h |  |  |
| 69 | 4.1.10 | Paremetrización del Proceso de Notificaciones y/o SMS |  | 3d | 2013-03-29 | 2013-04-02 | 68 | 6.25d | 0d |  | Enlace | 24h |  |  |
| 70 | 4.1.11 | Parametrización de Proceso de Tracking Global |  | 3d | 2013-04-03 | 2013-04-09 | 69 | 6.25d | 0d |  |  |  |  |  |
| 71 | 4.1.12 | Consulta Servicios |  | 4d | 2013-04-10 | 2013-04-15 | 70 | 6.25d | 0d |  |  |  |  |  |
| 72 | 4.1.13 | Configuración |  | 4d | 2013-04-16 | 2013-04-19 | 71 | 6.25d |  |  |  |  |  |  |
| 73 | 4.1.14 | Monitoreo |  | 4d | 2013-03-14 | 2013-03-20 |  | 10.25d | 0d |  |  |  |  |  |
| 74 | 4.1.15 | Gestor de Catálogos |  | 3d | 2013-03-21 | 2013-03-25 | 73 | 10.25d | 0d |  |  |  |  |  |
| 75 | 4.1.16 | Usuarios y seguridad |  | 10d | 2013-03-26 | 2013-04-10 | 74 | 10.25d | 0d |  |  |  |  |  |
| 76 | 4.1.17 | Log Transacciones |  | 3d | 2013-04-11 | 2013-04-15 | 75 | 10.25d |  |  | Enlace | 24h |  |  |

| ID | WBS | Task | Type | Duration | Start | Finish | Predecessors | Total slack | Free slack | Constraint | Resources | Work | Text2 | Text1 |
| --- | --- | --- | --- | --- | --- | --- | --- | --- | --- | --- | --- | --- | --- | --- |
| 77 | 4.2 | **Servicios Sincronización Sterling Commerce** |  | 10.38d | 2013-03-27 | 2013-04-12 | 46 | 42.62d |  |  |  | 83.04h | Enlace |  |
| 78 | 4.2.1 | Completar interacción BP |  | 5d | 2013-03-27 | 2013-04-02 |  | 42.62d | 0d |  | Enlace | 40h |  |  |
| 79 | 4.2.2 | Completar interación Scheduler y parámetros |  | 5.38d | 2013-04-03 | 2013-04-12 | 78 | 42.62d |  |  | Enlace | 43.04h |  |  |
| 80 | 4.3 | **SC Procesos y Mapas** |  | 19d | 2013-03-28 | 2013-04-25 | 52 | 33d |  |  | Enlace | 448h |  |  |
| 81 | 4.3.1 | BP 1 |  | 3d | 2013-03-28 | 2013-04-01 |  | 34d | 0d |  | Enlace | 24h |  |  |
| 82 | 4.3.2 | BP 2 |  | 3d | 2013-04-02 | 2013-04-08 | 81 | 34d | 0d |  | Enlace | 24h |  |  |
| 83 | 4.3.3 | BP 3 |  | 2d | 2013-04-09 | 2013-04-10 | 82 | 34d | 0d |  | Enlace | 16h |  |  |
| 84 | 4.3.4 | BP 4 |  | 2d | 2013-04-11 | 2013-04-12 | 83 | 34d | 0d |  | Enlace | 16h |  |  |
| 85 | 4.3.5 | BP 5 |  | 2d | 2013-04-15 | 2013-04-16 | 84 | 34d | 0d |  | Enlace | 16h |  |  |
| 86 | 4.3.6 | BP 6 |  | 2d | 2013-04-17 | 2013-04-18 | 85 | 34d | 0d |  | Enlace | 16h |  |  |
| 87 | 4.3.7 | BP 7 |  | 2d | 2013-04-19 | 2013-04-22 | 86 | 34d | 0d |  | Enlace | 16h |  |  |
| 88 | 4.3.8 | BP 8 |  | 2d | 2013-04-23 | 2013-04-24 | 87 | 34d |  |  | Enlace | 16h |  |  |
| 89 | 4.3.9 | Mapa 1 |  | 3d | 2013-03-28 | 2013-04-01 |  | 33d | 0d |  | Enlace | 24h |  |  |
| 90 | 4.3.10 | Mapa 2 |  | 2d | 2013-04-02 | 2013-04-03 | 89 | 33d | 0d |  | Enlace | 16h |  |  |
| 91 | 4.3.11 | Mapa 3 |  | 2d | 2013-04-08 | 2013-04-09 | 90 | 33d | 0d |  | Enlace | 16h |  |  |
| 92 | 4.3.12 | Mapa 4 |  | 2d | 2013-04-10 | 2013-04-11 | 91 | 33d | 0d |  | Enlace | 16h |  |  |
| 93 | 4.3.13 | Mapa 5 |  | 2d | 2013-04-12 | 2013-04-15 | 92 | 33d | 0d |  | Enlace | 16h |  |  |
| 94 | 4.3.14 | Mapa 6 |  | 2d | 2013-04-16 | 2013-04-17 | 93 | 33d | 0d |  | Enlace | 16h |  |  |
| 95 | 4.3.15 | Mapa 7 |  | 2d | 2013-04-18 | 2013-04-19 | 94 | 33d | 0d |  | Enlace | 16h |  |  |
| 96 | 4.3.16 | Mapa 8 |  | 2d | 2013-04-22 | 2013-04-23 | 95 | 33d | 0d |  | Enlace | 16h |  |  |
| 97 | 4.3.17 | Mapa 9 |  | 1d | 2013-04-24 | 2013-04-24 | 96 | 33d | 0d |  | Enlace | 8h |  |  |
| 98 | 4.3.18 | Mapa 10 |  | 1d | 2013-04-25 | 2013-04-25 | 97 | 33d |  |  | Enlace | 8h |  |  |
| 99 | 5 | **Pruebas Funcionales** |  | 36d | 2013-04-23 | 2013-06-12 |  | 0d |  |  |  | 449h |  |  |
| 100 | 5.1 | Entorno de Pruebas disponible | milestone | 0d | 2013-05-21 | 2013-05-21 |  | 17d |  | start no earlier than 2013-05-21 |  |  | Bancomer |  |
| 101 | 5.2 | Pruebas Técnicas |  | 20d | 2013-04-23 | 2013-05-21 | 59 | 5.25d | 0d |  | Enlace [200%] | 320h | Enlace |  |
| 102 | 5.3 | Soporte Pruebas Funcionales |  | 10.75d | 2013-05-22 | 2013-06-05 | 101 | 5.25d |  |  | Enlace [150%] | 129h | Enlace |  |
| 103 | 5.4 | Ejecutar Pruebas Funcionales | manual | 10d | 2013-05-22 | 2013-06-04 |  |  |  |  |  |  | Bancomer |  |
| 104 | 5.5 | Validar y aprobar pruebas funcionales |  | 6d | 2013-06-05 | 2013-06-12 | 103 | 0d |  |  |  |  | Bancomer | A990. Aprobación de pruebas funcionales |
