# Plan General Mapeador - Bancomer vr 1.31_2007

Schedule from MS Project, 2012-12-27 to 2013-06-12.

## Calendars

- Estándar: Mon-Fri 09:00-13:00, 15:00-19:00; Sat-Sun off. Exceptions (off unless hours are given): 2013-01-01 (Año Nuevo), 2013-02-04 (Puente Febrero), 2013-03-18 (Puente Marzo), 2013-04-04 to 2013-04-05 (Semana Santa 2013), 2013-05-01 (Puente Mayo).

## Resources

| Resource |
| --- |
| Bancomer |
| Enlace |

## Schedule

| ID | WBS | Task | Type | Duration | Start | Finish | Predecessors | Total slack | Free slack | Constraint | Resources | Work | Text2 | Text1 |
| --- | --- | --- | --- | --- | --- | --- | --- | --- | --- | --- | --- | --- | --- | --- |
| 1 | 1 | **Inicio** |  | 6d? | 2012-12-27 | 2013-01-04 |  | 108d |  |  |  |  |  |  |
| 2 | 1.1 | Kick off del Proyecto |  | 1d? | 2012-12-27 | 2012-12-27 |  | 108d | 0d |  |  |  | Enlace |  |
| 3 | 1.2 | Elaborar Plan de trabajo |  | 3d | 2012-12-28 | 2013-01-02 | 2 | 108d | 0d |  |  |  | Enlace | Plan |
| 4 | 1.3 | Inducción al equipo de trabajo |  | 2d | 2013-01-03 | 2013-01-04 | 3 | 108d |  |  |  |  | Enlace |  |
| 5 | 1.4 | Preparar ambiente de Trabajo |  | 6d | 2012-12-27 | 2013-01-04 |  | 108d |  |  |  |  | Enlace |  |
| 6 | 2 | Inicio | milestone | 0d? | 2012-12-27 | 2012-12-27 |  | 0d |  | must start on 2012-12-27 |  |  |  |  |
| 7 | 3 | Inicio | milestone | 0d? | 2013-01-04 | 2013-01-04 |  | 0d |  | must finish on 2013-01-04 |  |  |  |  |
| 8 | 4 | **Análisis** |  | 41d | 2012-12-27 | 2013-02-25 |  | 0d |  |  |  | 301.6h |  |  |
| 9 | 4.1 | Especifiación Requisitos |  | 21d | 2012-12-27 | 2013-01-25 |  | 73d | 0d |  |  |  | Bancomer | P102. Catálogo de Requisitos |
| 10 | 4.2 | Alcance Cerrado | milestone | 0d | 2013-01-25 | 2013-01-25 | 9 | 93d |  |  |  |  |  |  |
| 11 | 4.3 | Definición de Procesos | milestone | 0d | 2012-12-27 | 2012-12-27 |  | 114d |  |  |  |  | Bancomer | P036. Definición de procesos |
| 12 | 4.4 | Definición de casos de uso | milestone | 0d | 2012-12-27 | 2012-12-27 |  | 114d |  |  |  |  | Bancomer | P026. Definición de casos de uso |
| 13 | 4.5 | Interfaz Usuario |  | 11d | 2012-12-27 | 2013-01-11 |  | 0d |  |  |  |  | Bancomer | P099. Prototipo |
| 14 | 4.6 | Modelo de Datos |  | 5d | 2013-01-14 | 2013-01-18 | 13 | 0d |  |  |  |  | Bancomer | P087. Modelo Datos |
| 15 | 4.7 | Modelo de Procesos |  | 6d | 2013-01-21 | 2013-01-28 | 14 | 0d |  |  |  |  | Bancomer | C105. Modelo de procesos |
| 16 | 4.8 | Modelo Casos de Uso |  | 5d | 2013-01-29 | 2013-02-05 | 15 | 0d |  |  |  |  | Bancomer | P085. Modelo Casos de Uso |
| 17 | 4.9 | Estrategia y Plan de pruebas |  | 20d | 2013-01-28 | 2013-02-25 | 9 | 73d |  |  |  |  | Bancomer | C109. Estrategia de prueba |
| 18 | 4.10 | Casos de Prueba |  | 10d | 2013-02-06 | 2013-02-19 | 16 | 63d | 0d |  |  |  | Bancomer | C204. Casos de prueba |
| 19 | 4.11 | **Revisión de Requisitos** |  | 29d | 2013-01-14 | 2013-02-22 |  | 16d |  |  | Enlace [130%] | 301.6h | Enlace |  |
| 20 | 4.11.1 | Revisión de Interfaz de usuario |  | 5d | 2013-01-14 | 2013-01-18 | 13 | 98d |  |  |  |  | Enlace |  |
| 21 | 4.11.2 | Revisión modelo de datos |  | 6d | 2013-01-21 | 2013-01-28 | 14 | 92d |  |  |  |  | Enlace |  |
| 22 | 4.11.3 | Revision Modelo de procesos |  | 5d | 2013-01-29 | 2013-02-05 | 15 | 87d |  |  |  |  | Enlace |  |
| 23 | 4.11.4 | Revisión Modelo de Casos de Uso |  | 3d | 2013-02-06 | 2013-02-08 | 16 | 0d |  |  |  |  | Enlace |  |
| 24 | 4.11.5 | Revisión Final de Requisitos |  | 10d | 2013-02-11 | 2013-02-22 | 23 | 0d |  |  |  |  | Enlace |  |

Notes:
- 5: Definir compartido de documentos
- 9: Entregables: / ·c-102 Catálogo de requisitos / ·P099. Prototipo / ·P087. Modelo de datos / ·C105. Modelo de procesos / ·P085 Modelo de Casos de Uso / ·P036.Definición de Proceso / ·P026.Definición de Caso de Uso

| ID | WBS | Task | Duration | Start | Finish | Predecessors | Total slack | Free slack | Constraint | Resources | Work | Text2 |
| --- | --- | --- | --- | --- | --- | --- | --- | --- | --- | --- | --- | --- |
| 25 | 5 | **Diseño** | 49d | 2013-01-16 | 2013-03-27 |  | 27d |  |  |  | 638h |  |
| 26 | 5.1 | Diseño de Pruebas | 8d | 2013-02-20 | 2013-03-01 | 18 | 63d | 0d |  |  | 64h | Bancomer |
| 27 | 5.2 | Diseño Físico del modelo de datos | 6d | 2013-03-04 | 2013-03-11 | 26 | 63d |  |  |  | 48h | Bancomer |
| 28 | 5.3 | **Diseño detallado de programas y Componentes** | 49d | 2013-01-16 | 2013-03-27 |  | 27d |  |  |  | 526h |  |
| 29 | 5.3.1 | **WEB Mapeador** | 19d | 2013-02-25 | 2013-03-22 | 24 | 36d | 0d |  | Enlace | 152h | Enlace |
| 30 | 5.3.1.1 | Gestión de Mapas | 2d | 2013-02-25 | 2013-02-26 |  | 36d | 0d |  |  |  |  |
| 31 | 5.3.1.2 | Administración Notificaciones y alertas | 3d | 2013-02-27 | 2013-03-01 | 30 | 36d | 0d |  |  |  |  |
| 32 | 5.3.1.3 | Administración de puntos de acceso. | 2d | 2013-03-04 | 2013-03-05 | 31 | 36d | 0d |  |  |  |  |
| 33 | 5.3.1.4 | Administración de clientes | 3d | 2013-03-06 | 2013-03-08 | 32 | 36d | 0d |  |  |  |  |
| 34 | 5.3.1.5 | Administración de productos. | 3d | 2013-03-11 | 2013-03-13 | 33 | 36d | 0d |  |  |  |  |
| 35 | 5.3.1.6 | Administración de Flujos | 3d | 2013-03-14 | 2013-03-19 | 34 | 36d | 0d |  |  |  |  |
| 36 | 5.3.1.7 | Parametrización del Proceso de Mapas | 3d | 2013-03-20 | 2013-03-22 | 35 | 36d |  |  |  |  |  |
| 37 | 5.3.1.8 | Parametrización del Proceso de Persistencia de Archivos | 3d | 2013-02-25 | 2013-02-27 |  | 36d | 0d |  |  |  |  |
| 38 | 5.3.1.9 | Parametrización del Registro de datos de Archivos | 2d | 2013-02-28 | 2013-03-01 | 37 | 36d | 0d |  |  |  |  |
| 39 | 5.3.1.10 | Paremetrización del Proceso de Notificaciones y/o SMS | 2d | 2013-03-04 | 2013-03-05 | 38 | 36d | 0d |  |  |  |  |
| 40 | 5.3.1.11 | Parametrización de Proceso de Tracking Global | 3d | 2013-03-06 | 2013-03-08 | 39 | 36d | 0d |  |  |  |  |
| 41 | 5.3.1.12 | Consulta Servicios | 3d | 2013-03-11 | 2013-03-13 | 40 | 36d | 0d |  |  |  |  |
| 42 | 5.3.1.13 | Configuración | 2d | 2013-03-14 | 2013-03-15 | 41 | 36d | 0d |  |  |  |  |
| 43 | 5.3.1.14 | Monitoreo | 2d | 2013-03-19 | 2013-03-20 | 42 | 36d | 0d |  |  |  |  |
| 44 | 5.3.1.15 | Gestor de Catálogos | 2d | 2013-03-21 | 2013-03-22 | 43 | 36d |  |  |  |  |  |
| 45 | 5.3.1.16 | Usuarios y seguridad | 5d | 2013-02-25 | 2013-03-01 |  | 48d | 0d |  |  |  |  |
| 46 | 5.3.1.17 | Log Transacciones | 2d | 2013-03-04 | 2013-03-05 | 45 | 48d |  |  |  |  |  |
| 47 | 5.3.2 | **Sterling Commerce Integrator (Conversión)** | 49d | 2013-01-16 | 2013-03-27 |  | 27d |  |  |  | 374h |  |
| 48 | 5.3.2.1 | **POC Mapeador/ SC Integrator** | 25d | 2013-01-16 | 2013-02-20 |  | 56d | 0d |  | Enlace [50%] | 260h | Enlace |
| 49 | 5.3.2.1.1 | Definir prueba de concepto WebMapeador / SC Integrator | 3d | 2013-01-16 | 2013-01-18 |  | 56d | 0d | start no earlier than 2013-01-16 |  | 24h |  |
| 50 | 5.3.2.1.2 | Preparar ambiente para POC | 2d | 2013-01-21 | 2013-01-22 | 49 | 56d | 0d |  |  | 16h |  |
| 51 | 5.3.2.1.3 | Desarrollar prueba de concepto WebMapeador / SC Integrator | 15d | 2013-01-23 | 2013-02-13 | 50 | 56d | 0d |  |  | 80h |  |
| 52 | 5.3.2.1.4 | Diseño de componente para ejecutar BP | 2d | 2013-02-14 | 2013-02-15 | 51 | 56d | 0d |  |  | 16h |  |
| 53 | 5.3.2.1.5 | Diseño de componente para actualización de Calendarios | 3d | 2013-02-18 | 2013-02-20 | 52 | 56d |  |  |  | 24h |  |

Notes:
- 27: Text1: C310. Modelo Datos Físico
- 28: Text1: P037. Definición de Programa / C118. Modelo SODA / P987. Definición de Clases de Diseño

| ID | WBS | Task | Type | Duration | Start | Finish | Predecessors | Total slack | Free slack | Constraint | Resources | Work | Text2 | Text1 |
| --- | --- | --- | --- | --- | --- | --- | --- | --- | --- | --- | --- | --- | --- | --- |
| 54 | 5.3.2.2 | **SC Intgrator Procesos y mapas** |  | 22d | 2013-02-25 | 2013-03-27 | 24 | 0d |  |  | Enlace [50%] | 88h | Enlace |  |
| 55 | 5.3.2.2.1 | Diseño de Business Processes |  | 10d | 2013-02-25 | 2013-03-08 |  | 0d |  |  |  |  |  |  |
| 56 | 5.3.2.2.2 | Diseño de Mapas de Conversión |  | 8d | 2013-03-11 | 2013-03-21 | 55 | 0d |  |  |  |  |  |  |
| 57 | 5.3.2.2.3 | Diseño Esquemas de notificacion y configuración general |  | 4d | 2013-03-22 | 2013-03-27 | 56 | 0d |  |  |  |  |  |  |
| 58 | 5.3.2.3 | Revision Diseño SC |  | 15d | 2013-03-06 | 2013-03-27 | 54FF | 52d |  |  | Enlace [21.7%] | 26h | Enlace |  |
| 59 | 5.4 | Entorno de Desarrollo Disponible | milestone | 0d | 2013-02-22 | 2013-02-22 |  | 75d |  | start no earlier than 2013-02-22 |  |  | Bancomer |  |
| 60 | 6 | **Construcción** |  | 53d? | 2013-02-21 | 2013-05-10 |  | 23d |  |  |  | 1176h |  | P014. Código de componentes |
| 61 | 6.1 | **WEB Mapeador** |  | 25d | 2013-03-14 | 2013-04-22 | 29FS-6d | 36d |  |  |  | 552h | Enlace |  |
| 62 | 6.1.1 | Gestión de Mapas |  | 4d | 2013-03-14 | 2013-03-20 |  | 36d | 0d |  | Enlace | 32h |  |  |
| 63 | 6.1.2 | Administración Notificaciones y alertas |  | 5d | 2013-03-21 | 2013-03-27 | 62 | 36d | 0d |  | Enlace | 40h |  |  |
| 64 | 6.1.3 | Administración de puntos de acceso. |  | 5d | 2013-03-28 | 2013-04-03 | 63 | 36d | 0d |  | Enlace | 40h |  |  |
| 65 | 6.1.4 | Administración de clientes |  | 5d | 2013-04-08 | 2013-04-12 | 64 | 36d | 0d |  | Enlace | 40h |  |  |
| 66 | 6.1.5 | Administración de productos. |  | 3d | 2013-04-15 | 2013-04-17 | 65 | 36d | 0d |  | Enlace | 24h |  |  |
| 67 | 6.1.6 | Administración de Flujos |  | 3d | 2013-04-18 | 2013-04-22 | 66 | 36d |  |  | Enlace | 24h |  |  |
| 68 | 6.1.7 | Parametrización del Proceso de Mapas |  | 3d | 2013-03-14 | 2013-03-19 |  | 37d | 0d |  | Enlace | 24h |  |  |
| 69 | 6.1.8 | Parametrización del Proceso de Persistencia de Archivos |  | 3d | 2013-03-20 | 2013-03-22 | 68 | 37d | 0d |  | Enlace | 24h |  |  |
| 70 | 6.1.9 | Parametrización del Registro de datos de Archivos |  | 4d | 2013-03-25 | 2013-03-28 | 69 | 37d | 0d |  | Enlace | 32h |  |  |
| 71 | 6.1.10 | Paremetrización del Proceso de Notificaciones y/o SMS |  | 3d | 2013-03-29 | 2013-04-02 | 70 | 37d | 0d |  | Enlace | 24h |  |  |
| 72 | 6.1.11 | Parametrización de Proceso de Tracking Global |  | 3d | 2013-04-03 | 2013-04-09 | 71 | 37d | 0d |  | Enlace | 24h |  |  |
| 73 | 6.1.12 | Consulta Servicios |  | 4d | 2013-04-10 | 2013-04-15 | 72 | 37d | 0d |  | Enlace | 32h |  |  |
| 74 | 6.1.13 | Configuración |  | 4d | 2013-04-16 | 2013-04-19 | 73 | 37d |  |  | Enlace | 32h |  |  |
| 75 | 6.1.14 | Monitoreo |  | 4d | 2013-03-14 | 2013-03-20 |  | 41d | 0d |  | Enlace | 32h |  |  |
| 76 | 6.1.15 | Gestor de Catálogos |  | 3d | 2013-03-21 | 2013-03-25 | 75 | 41d | 0d |  | Enlace | 24h |  |  |
| 77 | 6.1.16 | Usuarios y seguridad |  | 10d | 2013-03-26 | 2013-04-10 | 76 | 41d | 0d |  | Enlace | 80h |  |  |
| 78 | 6.1.17 | Log Transacciones |  | 3d | 2013-04-11 | 2013-04-15 | 77 | 41d |  |  | Enlace | 24h |  |  |

| ID | WBS | Task | Type | Duration | Start | Finish | Predecessors | Total slack | Free slack | Constraint | Resources | Work | Text2 | Text1 |
| --- | --- | --- | --- | --- | --- | --- | --- | --- | --- | --- | --- | --- | --- | --- |
| 79 | 6.2 | **Servicios Sincronización Sterling Commerce** |  | 20d | 2013-02-21 | 2013-03-21 | 48 | 56d |  |  |  | 160h | Enlace |  |
| 80 | 6.2.1 | Completar interacción BP |  | 10d | 2013-02-21 | 2013-03-06 |  | 56d | 0d |  | Enlace | 80h |  |  |
| 81 | 6.2.2 | Completar interación Scheduler y parámetros |  | 10d | 2013-03-07 | 2013-03-21 | 80 | 56d |  |  | Enlace | 80h |  |  |
| 82 | 6.3 | **SC Procesos y Mapas** |  | 29d? | 2013-03-28 | 2013-05-10 | 54 | 0d |  |  | Enlace | 464h |  |  |
| 83 | 6.3.1 | SC Procesos y Mapas | milestone | 0d? | 2013-03-28 | 2013-03-28 |  | 0d |  | must start on 2013-03-28 |  |  |  |  |
| 84 | 6.3.2 | BP 1 |  | 10d | 2013-03-28 | 2013-04-12 |  | 23d | 0d |  | Enlace | 80h |  |  |
| 85 | 6.3.3 | BP 2 |  | 10d | 2013-04-15 | 2013-04-26 | 84 | 23d | 0d |  | Enlace | 80h |  |  |
| 86 | 6.3.4 | Mapa 1 |  | 3d | 2013-04-29 | 2013-05-02 | 85 | 23d | 0d |  | Enlace | 24h |  |  |
| 87 | 6.3.5 | Mapa 2 |  | 3d | 2013-05-03 | 2013-05-07 | 86 | 23d | 0d |  | Enlace | 24h |  |  |
| 88 | 6.3.6 | Mapa 3 |  | 3d | 2013-05-08 | 2013-05-10 | 87 | 23d |  |  | Enlace | 24h |  |  |
| 89 | 7 | **Pruebas Funcionales** |  | 34d | 2013-04-25 | 2013-06-12 |  | 0d |  |  |  | 577h |  |  |
| 90 | 7.1 | Entorno de Pruebas disponible |  | 5d | 2013-05-21 | 2013-05-27 |  | 12d |  | start no earlier than 2013-05-21 |  |  | Bancomer |  |
| 91 | 7.2 | Pruebas Técnicas |  | 20d | 2013-04-25 | 2013-05-23 |  | 3.25d | 0d | start no earlier than 2013-04-25 | Enlace [200%] | 320h | Enlace |  |
| 92 | 7.3 | Soporte Pruebas Funcionales |  | 10.75d | 2013-05-24 | 2013-06-07 | 91 | 3.25d |  |  | Enlace [150%] | 129h | Enlace |  |
| 93 | 7.4 | Ejecutar Pruebas Funcionales |  | 10d | 2013-05-22 | 2013-06-04 |  | 0d |  | start no earlier than 2013-05-22 |  | 80h | Bancomer |  |
| 94 | 7.5 | Validar y aprobar pruebas funcionales |  | 6d | 2013-06-05 | 2013-06-12 | 93 | 0d |  |  |  | 48h | Bancomer | A990. Aprobación de pruebas funcionales |
